How a schedule from GanttProject changed from version to version. A marks actual dates.

## Version 1 (saved 2015-07-16)

Note of the change: Present Workw

| ID | WBS | Task | Duration | Start | Finish | Predecessors |
| --- | --- | --- | --- | --- | --- | --- |
| 1 | 1 | **WXServer** | 60d | 2015-06-01 | 2015-08-21 |  |
| 2 |  | Renderer | 3d | 2015-07-01 | 2015-07-03 |  |
| 3 |  | Renderer P2 | 5d | 2015-07-27 | 2015-07-31 | 8 |
| 4 |  | Framework | 60d | 2015-06-01 | 2015-08-21 |  |
| 5 | 1.4 | **Unisys Project** | 60d | 2015-06-01 | 2015-08-21 |  |
| 6 |  | File Processing | 60d | 2015-06-01 | 2015-08-21 |  |
| 7 | 2 | **scheduler** | 82d | 2015-07-16 | 2015-11-06 |  |
| 8 |  | Model | 7d | 2015-07-16 | 2015-07-24 |  |
| 9 |  | Model P2 | 30d | 2015-08-03 | 2015-09-11 | 3 |
| 10 |  | WRF Model Wrapper | 4d | 2015-07-21 | 2015-07-24 |  |
| 11 |  | WW4 Model Wrapper | 4d | 2015-07-22 | 2015-07-27 | 21 |
| 12 |  | SWAN Model Wrapper | 10d | 2015-07-20 | 2015-07-31 |  |
| 13 |  | ROMS Model Wrapper | 10d | 2015-07-20 | 2015-07-31 |  |
| 14 |  | POM Model Wrapper | 10d | 2015-08-03 | 2015-08-14 | 13 |
| 15 |  | Downloads | 20d | 2015-09-14 | 2015-10-09 | 9 |
| 16 |  | Products | 20d | 2015-10-12 | 2015-11-06 | 15 |
| 17 |  | Cloud Resource config | 10d | 2015-09-14 | 2015-09-25 | 9 |
| 18 |  | Disaster Recovery | 30d | 2015-09-28 | 2015-11-06 | 17 |
| 19 |  | UDS - Distributed | 30d | 2015-08-24 | 2015-10-02 | 4 |
| 20 |  | verify | 1d | 2015-06-24 | 2015-06-24 |  |
| 21 |  | WW4 into production | 20d | 2015-06-24 | 2015-07-21 |  |
| 22 |  | ST6 Physics into ww4 | 25d | 2015-07-28 | 2015-08-31 | 11 |
| 23 |  | MOS Scheme | 30d | 2015-08-24 | 2015-10-02 | 6 |
| 24 |  | WEB Dev | 1d | 2015-06-24 | 2015-06-24 |  |
| 25 |  | Lightning Strike Database | 60d | 2015-06-22 | 2015-09-11 |  |
| 26 |  | gisPlugin | 20d | 2015-06-01 | 2015-06-26 |  |
| 27 | 11 | **Accuweather** | 100d | 2015-06-01 | 2015-10-16 |  |
| 28 |  | Meetings | 100d | 2015-06-01 | 2015-10-16 |  |
| 29 | 12 | **Weather Telematics** | 100d | 2015-06-01 | 2015-10-16 |  |
| 30 |  | Meetings | 100d | 2015-06-01 | 2015-10-16 |  |
| 31 | 13 | **Satellite data Feed** | 40d | 2015-07-06 | 2015-08-28 |  |
| 32 |  | Migrate Existing Satellite Feed | 10d | 2015-07-06 | 2015-07-17 |  |
| 33 |  | Himuana 8 | 30d | 2015-07-20 | 2015-08-28 | 32 |

## Version 2 (saved 2015-07-17)

Note of the change: daily update

Last finish 2015-11-06 → 2019-03-29 (+1239d).

Added:

| ID | Task | Duration | Start | Finish | Resources |
| --- | --- | --- | --- | --- | --- |
| 34 | Astrix Server | 10d | 2015-07-13 | 2015-07-24 | Andrew Parsonov [80%] |
| 35 | SysAdmin | 1000d | 2015-06-01 | 2019-03-29 | Andrew Parsonov [20%] |
| 36 | System Documentation | 90d | 2015-06-01 | 2015-10-02 | Steven Fister [60%] |
| 37 | Reporting | 120d | 2015-06-01 | 2015-11-13 | Steven Fister [30%] |
